# PreTTY

Schedule from MS Project, 2017-11-17 to 2017-12-30, A marks actual dates.

## Calendars

- PreTTY Team Calendar: Mon-Thu off; Fri-Sat 09:00-12:00, 13:00-18:00; Sun off.

## Resources

| Resource |
| --- |
| meetviolet |
| tang9812 |
| TinkerAC |
| sherjy |
| Jack-Q |
| QianVivian |

## Schedule

| ID | WBS | Task | Type | Duration | Start | Finish | Predecessors | Complete | Remaining | Actual start | Actual finish | Total slack | Free slack | Constraint | Resources | Work | Actual work |
| --- | --- | --- | --- | --- | --- | --- | --- | --- | --- | --- | --- | --- | --- | --- | --- | --- | --- |
| 1 | 1 | **Initiating** |  | 1.75d | 2017-11-17 10:00 A | 2017-11-18 17:00 |  | 100% |  |  | 2017-11-18 15:00 |  |  |  |  | 72h | 72h |
| 2 | 1.1 | Project Scope Decision |  | 7h | 2017-11-17 10:00 A | 2017-11-17 18:00 A |  | 100% |  |  |  |  |  |  | Jack-Q; meetviolet; QianVivian; sherjy; tang9812; TinkerAC | 42h | 42h |
| 3 | 1.2 | Project Charter |  | 5h | 2017-11-18 09:00 A | 2017-11-18 15:00 A | 2 | 100% |  |  |  |  |  |  | Jack-Q; meetviolet; QianVivian; sherjy; tang9812; TinkerAC | 30h | 30h |
| 4 | 2 | **Planning** |  | 2d | 2017-11-24 08:00 | 2017-11-25 17:00 A |  | 100% |  | 2017-11-24 09:00 |  |  |  |  |  | 31h | 31h |
| 5 | 2.1 | Scope Statement |  | 2h | 2017-11-24 09:00 A | 2017-11-24 11:00 A |  | 100% |  |  |  |  |  |  | Jack-Q; meetviolet; QianVivian; sherjy; tang9812; TinkerAC | 12h | 12h |
| 6 | 2.2 | Project Management Plan |  | 5h | 2017-11-24 11:00 A | 2017-11-24 17:00 A | 5 | 100% |  |  |  |  |  |  | meetviolet | 5h | 5h |
| 7 | 2.3 | Work Breakdown Structure |  | 3.92h | 2017-11-24 17:00 A | 2017-11-25 11:55 A | 6 | 100% |  |  |  |  |  | start no earlier than 2017-11-24 17:00 | Jack-Q; meetviolet; QianVivian; tang9812; sherjy; TinkerAC | 12h | 12h |
| 8 | 2.4 | Scheduling |  | 2h | 2017-11-25 11:55 A | 2017-11-25 14:55 A | 7 | 100% |  |  |  |  |  |  | meetviolet | 2h | 2h |
| 9 | 2.5 | Project Planning Milestore | milestone | 0h | 2017-11-25 17:00 A | 2017-11-25 17:00 A | 8, 5, 6, 7 | 100% |  |  |  |  |  | finish no earlier than 2017-11-25 17:00 |  |  |  |
| 10 | 3 | **Executing** |  | 12d | 2017-11-24 08:00 | 2017-12-30 17:00 |  | 8% | 11.04d | 2017-11-24 09:00 |  |  |  |  |  | 236.5h | 17h |
| 11 | 3.1 | **Supporting** |  | 1d | 2017-11-24 09:00 A | 2017-11-24 18:00 A |  | 100% |  |  |  |  |  |  |  | 8h | 8h |
| 12 | 3.1.1 | Configuration assets management |  | 2h | 2017-11-24 09:00 A | 2017-11-24 11:00 A |  | 100% |  |  |  |  |  |  | TinkerAC | 2h | 2h |
| 13 | 3.1.2 | Project framework setup |  | 4h | 2017-11-24 11:00 A | 2017-11-24 16:00 A | 12 | 100% |  |  |  |  |  |  | sherjy | 4h | 4h |
| 14 | 3.1.3 | Development environment setup |  | 2h | 2017-11-24 16:00 A | 2017-11-24 18:00 A | 13 | 100% |  |  |  |  |  |  | sherjy | 2h | 2h |
| 15 | 3.2 | **Prototyping** |  | 6.2d | 2017-11-25 10:25 A | 2017-12-16 12:00 | 11 | 64% | 2.21d |  |  | 4.5d |  |  |  | 14h | 9h |
| 16 | 3.2.1 | Electron framework integration |  | 3h | 2017-11-25 10:25 A | 2017-11-25 14:25 A |  | 100% |  |  |  |  |  | start no earlier than 2017-11-25 10:25 | TinkerAC | 3h | 3h |
| 17 | 3.2.2 | xterm.js integration |  | 6h | 2017-11-25 14:25 A | 2017-12-15 11:25 A | 16 | 100% |  |  |  |  |  |  | TinkerAC | 6h | 6h |
| 18 | 3.2.3 | ssh2 integration |  | 5h | 2017-12-15 16:00 | 2017-12-16 12:00 | 17 |  |  |  |  | 4.5d |  |  | sherjy | 5h |  |
| 19 | 3.3 | **Designing** |  | 6d | 2017-12-01 08:00 | 2017-12-16 17:00 |  |  |  |  |  |  |  |  |  | 58h |  |
| 20 | 3.3.1 | Application Architecture Design |  | 2h | 2017-12-01 09:00 | 2017-12-01 11:00 |  |  |  |  |  | 4.75d | 0d |  | Jack-Q; sherjy; tang9812; TinkerAC; meetviolet; QianVivian | 12h |  |
| 21 | 3.3.2 | Data Storage Design |  | 3h | 2017-12-01 11:00 | 2017-12-01 15:00 | 20 |  |  |  |  | 4.75d | 0d |  | Jack-Q; tang9812; TinkerAC | 9h |  |
| 22 | 3.3.3 | State Tree Design |  | 2h | 2017-12-01 15:00 | 2017-12-01 17:00 | 20 |  |  |  |  | 4.5d | 0d |  | Jack-Q; tang9812; TinkerAC | 6h |  |
| 23 | 3.3.4 | User Interaction Design |  | 4h | 2017-12-01 17:00 | 2017-12-02 12:00 | 20 |  |  |  |  | 6d | 0d |  | tang9812 | 4h |  |
| 24 | 3.3.5 | **User Interface Design** |  | 2.88d | 2017-12-02 13:00 | 2017-12-15 11:00 | 23 |  |  |  |  | 3.88d |  |  |  | 25h |  |
| 25 | 3.3.5.1 | Master password page |  | 2h | 2017-12-08 11:00 | 2017-12-08 14:00 |  |  |  |  |  | 5.62d | 0d |  | tang9812 | 2h |  |
| 26 | 3.3.5.2 | Welcome page |  | 3h | 2017-12-02 17:00 | 2017-12-08 11:00 |  |  |  |  |  | 5.88d | 0d |  | tang9812 | 3h |  |
| 27 | 3.3.5.3 | Create identity page |  | 2h | 2017-12-08 14:00 | 2017-12-08 16:00 |  |  |  |  |  | 5.25d | 0d |  | tang9812 | 2h |  |
| 28 | 3.3.5.4 | Identity management page |  | 2h | 2017-12-08 16:00 | 2017-12-08 18:00 |  |  |  |  |  | 5d | 0d |  | tang9812 | 2h |  |
| 29 | 3.3.5.5 | Create host profile page |  | 2h | 2017-12-09 09:00 | 2017-12-09 11:00 |  |  |  |  |  | 4.75d | 0d |  | tang9812 | 2h |  |
| 30 | 3.3.5.6 | Virtual terminal page |  | 2h | 2017-12-09 11:00 | 2017-12-09 14:00 |  |  |  |  |  | 4.12d | 0d |  | tang9812 | 2h |  |
| 31 | 3.3.5.7 | SFTP file listing page |  | 4h | 2017-12-02 13:00 | 2017-12-02 17:00 |  |  |  |  |  | 6.25d | 0d |  | tang9812 | 4h |  |
| 32 | 3.3.5.8 | SFTP file transfering page |  | 2h | 2017-12-09 14:00 | 2017-12-09 16:00 |  |  |  |  |  | 4d | 0d |  | tang9812 | 2h |  |
| 33 | 3.3.5.9 | Connection history page |  | 2h | 2017-12-09 16:00 | 2017-12-09 18:00 |  |  |  |  |  | 3.75d | 0d |  | tang9812 | 2h |  |
| 34 | 3.3.5.10 | Known/trusted host page |  | 2h | 2017-12-15 09:00 | 2017-12-15 11:00 |  |  |  |  |  | 3.88d | 0d |  | tang9812 | 2h |  |
| 35 | 3.3.5.11 | Settings page |  | 2h | 2017-12-15 09:00 | 2017-12-15 11:00 |  |  |  |  |  | 3.75d | 0d |  | tang9812 | 2h |  |
| 36 | 3.3.6 | Common Control Design |  | 2h | 2017-12-15 09:00 | 2017-12-15 11:00 | 20 |  |  |  |  | 5.62d |  |  | tang9812 | 2h |  |

| ID | WBS | Task | Duration | Start | Finish | Predecessors | Total slack | Free slack | Resources | Work |
| --- | --- | --- | --- | --- | --- | --- | --- | --- | --- | --- |
| 37 | 3.4 | **Implementing** | 8d | 2017-12-01 08:00 | 2017-12-23 17:00 | 21 |  |  |  | 88h |
| 38 | 3.4.1 | **UI Pages** | 2.88d | 2017-12-02 17:00 | 2017-12-15 16:00 |  | 3.62d |  |  | 22h |
| 39 | 3.4.1.1 | Master password page | 2h | 2017-12-08 14:00 | 2017-12-08 16:00 | 25 | 5.62d | 0d | sherjy | 2h |
| 40 | 3.4.1.2 | Welcome page | 2h | 2017-12-08 11:00 | 2017-12-08 14:00 | 26 | 5.88d | 0d | sherjy | 2h |
| 41 | 3.4.1.3 | Create identity page | 2h | 2017-12-09 11:00 | 2017-12-09 14:00 | 27 | 4.88d | 0d | TinkerAC | 2h |
| 42 | 3.4.1.4 | Identity management page | 2h | 2017-12-09 14:00 | 2017-12-09 16:00 | 28 | 4.62d | 0d | TinkerAC | 2h |
| 43 | 3.4.1.5 | Create host profile page | 2h | 2017-12-09 16:00 | 2017-12-09 18:00 | 29 | 4.38d | 0d | TinkerAC | 2h |
| 44 | 3.4.1.6 | Virtual terminal page | 2h | 2017-12-15 09:00 | 2017-12-15 11:00 | 30 | 4.12d | 0d | TinkerAC | 2h |
| 45 | 3.4.1.7 | SFTP file listing page | 2h | 2017-12-02 17:00 | 2017-12-08 10:00 | 31 | 6.25d | 0d | sherjy | 2h |
| 46 | 3.4.1.8 | SFTP file transfering page | 2h | 2017-12-09 16:00 | 2017-12-09 18:00 | 32 | 4d | 0d | sherjy | 2h |
| 47 | 3.4.1.9 | Connection history page | 2h | 2017-12-15 09:00 | 2017-12-15 11:00 | 33 | 3.75d | 0d | sherjy | 2h |
| 48 | 3.4.1.10 | Known/trusted host page | 2h | 2017-12-15 11:00 | 2017-12-15 14:00 | 34 | 3.88d | 0d | sherjy | 2h |
| 49 | 3.4.1.11 | Settings page | 2h | 2017-12-15 14:00 | 2017-12-15 16:00 | 35 | 3.62d | 0d | sherjy | 2h |
| 50 | 3.4.2 | **Global component** | 3.75d | 2017-12-01 17:00 | 2017-12-15 15:00 | 22 | 3.75d |  |  | 28h |
| 51 | 3.4.2.1 | Window frame (chrome) | 3h | 2017-12-02 16:00 | 2017-12-08 10:00 |  | 6.25d |  | TinkerAC | 3h |
| 52 | 3.4.2.2 | Quick action control | 4h | 2017-12-01 17:00 | 2017-12-02 12:00 |  | 7d |  | TinkerAC | 4h |
| 53 | 3.4.2.3 | Command palette | 8h | 2017-12-09 15:00 | 2017-12-15 15:00 |  | 3.75d |  | Jack-Q | 8h |
| 54 | 3.4.2.4 | Panel & tab layout | 10h | 2017-12-08 13:00 | 2017-12-09 15:00 |  | 4.75d |  | Jack-Q | 10h |
| 55 | 3.4.2.5 | Notification host | 3h | 2017-12-08 10:00 | 2017-12-08 14:00 |  | 5.88d |  | TinkerAC | 3h |
| 56 | 3.4.3 | **Application Services** | 4.25d | 2017-12-01 17:00 | 2017-12-16 10:00 | 22, 21 | 3.25d |  |  | 23h |
| 57 | 3.4.3.1 | Connection management service | 8h | 2017-12-01 17:00 | 2017-12-02 17:00 |  | 5.31d | 0d | Jack-Q | 8h |
| 58 | 3.4.3.2 | Data storage service | 6h | 2017-12-08 14:00 | 2017-12-09 11:00 |  | 5.12d | 0d | TinkerAC | 6h |
| 59 | 3.4.3.3 | Application quick action service | 4h | 2017-12-15 15:00 | 2017-12-16 10:00 |  | 3.25d | 0d | Jack-Q | 4h |
| 60 | 3.4.3.4 | Shortcut key service | 5h | 2017-12-01 17:00 | 2017-12-02 14:00 |  | 4.5d | 0d | sherjy | 5h |

| ID | WBS | Task | Duration | Start | Finish | Predecessors | Total slack | Free slack | Resources | Work |
| --- | --- | --- | --- | --- | --- | --- | --- | --- | --- | --- |
| 61 | 3.4.4 | **Application Utilities** | 2.12d | 2017-12-01 11:00 | 2017-12-08 12:00 | 20 | 6d |  |  | 15h |
| 62 | 3.4.4.1 | Common UI controls | 4h | 2017-12-02 17:00 | 2017-12-08 12:00 |  | 6d |  | Jack-Q | 4h |
| 63 | 3.4.4.2 | SSH keygen | 3h | 2017-12-02 14:00 | 2017-12-02 17:00 |  | 6.5d |  | sherjy | 3h |
| 64 | 3.4.4.3 | SSH copy-id | 5h | 2017-12-01 11:00 | 2017-12-01 17:00 |  | 7.5d |  | sherjy | 5h |
| 65 | 3.4.4.4 | Global stylesheet | 3h | 2017-12-02 13:00 | 2017-12-02 16:00 |  | 6.62d |  | TinkerAC | 3h |
| 66 | 3.5 | **Testing** | 10d | 2017-12-01 08:00 | 2017-12-30 17:00 |  |  |  |  | 45.5h |
| 67 | 3.5.1 | **Testing Supporting** | 0.62d | 2017-12-01 11:00 | 2017-12-01 17:00 |  | 6.31d | 0d |  | 5h |
| 68 | 3.5.1.1 | Testing framework setup | 3h | 2017-12-01 11:00 | 2017-12-01 15:00 |  | 6.56d |  | QianVivian | 3h |
| 69 | 3.5.1.2 | Testing server script | 2h | 2017-12-01 15:00 | 2017-12-01 17:00 |  | 6.31d |  | QianVivian | 2h |
| 70 | 3.5.2 | **UI pages test cases** | 3d | 2017-12-08 10:00 | 2017-12-16 10:00 | 67 | 3.5d | 3d |  | 16.5h |
| 71 | 3.5.2.1 | Master password page | 1.5h | 2017-12-08 16:00 | 2017-12-08 17:30 | 39 | 5.69d |  | QianVivian | 1.5h |
| 72 | 3.5.2.2 | Welcome page | 1.5h | 2017-12-08 14:00 | 2017-12-08 15:30 | 40 | 5.94d |  | QianVivian | 1.5h |
| 73 | 3.5.2.3 | Create identity page | 1.5h | 2017-12-09 14:00 | 2017-12-09 15:30 | 41 | 4.94d |  | QianVivian | 1.5h |
| 74 | 3.5.2.4 | Identity management page | 1.5h | 2017-12-09 16:00 | 2017-12-09 17:30 | 42 | 4.69d |  | QianVivian | 1.5h |
| 75 | 3.5.2.5 | Create host profile page | 1.5h | 2017-12-15 09:00 | 2017-12-15 10:30 | 43 | 4.44d |  | QianVivian | 1.5h |
| 76 | 3.5.2.6 | Virtual terminal page | 1.5h | 2017-12-15 11:00 | 2017-12-15 13:30 | 44 | 4.19d |  | QianVivian | 1.5h |
| 77 | 3.5.2.7 | SFTP file listing page | 1.5h | 2017-12-08 10:00 | 2017-12-08 11:30 | 45 | 6.31d |  | QianVivian | 1.5h |
| 78 | 3.5.2.8 | SFTP file transfering page | 1.5h | 2017-12-15 10:30 | 2017-12-15 16:00 | 46 | 3.88d |  | QianVivian | 1.5h |
| 79 | 3.5.2.9 | Connection history page | 1.5h | 2017-12-15 17:30 | 2017-12-16 10:00 | 47 | 3.5d |  | QianVivian | 1.5h |
| 80 | 3.5.2.10 | Known/trusted host page | 1.5h | 2017-12-15 14:00 | 2017-12-15 15:30 | 48 | 3.94d |  | QianVivian | 1.5h |
| 81 | 3.5.2.11 | Settings page | 1.5h | 2017-12-15 16:00 | 2017-12-15 17:30 | 49 | 3.69d |  | QianVivian | 1.5h |
| 82 | 3.5.3 | **Application service test cases** | 3.5d | 2017-12-02 17:00 | 2017-12-16 12:00 | 67 | 3.25d | 2.75d |  | 11h |
| 83 | 3.5.3.1 | Connection management service | 4h | 2017-12-02 17:00 | 2017-12-09 11:30 | 57 | 5.31d |  | QianVivian | 4h |
| 84 | 3.5.3.2 | Data storage service | 2h | 2017-12-09 11:00 | 2017-12-09 14:00 | 58 | 5.12d |  | QianVivian | 2h |
| 85 | 3.5.3.3 | Application quick action service | 2h | 2017-12-16 10:00 | 2017-12-16 12:00 | 59 | 3.25d |  | QianVivian | 2h |
| 86 | 3.5.3.4 | Shortcut key service | 3h | 2017-12-08 13:00 | 2017-12-09 10:00 | 60 | 5.5d |  | QianVivian | 3h |
| 87 | 3.5.4 | Compatibility testing | 2h | 2017-12-23 17:00 | 2017-12-29 10:00 | 37, 67 | 0.5d | 0d | QianVivian | 2h |
| 88 | 3.5.5 | Non-functional testing | 8h | 2017-12-01 17:00 | 2017-12-02 17:00 | 67 | 6.75d | 6.25d | QianVivian | 8h |
| 89 | 3.5.6 | Testing Report | 3h | 2017-12-29 10:00 | 2017-12-29 14:00 | 67, 70, 82, 87, 88 | 0.5d | 0d | QianVivian | 3h |

| ID | WBS | Task | Type | Duration | Start | Finish | Predecessors | Total slack | Free slack | Constraint | Resources | Work |
| --- | --- | --- | --- | --- | --- | --- | --- | --- | --- | --- | --- | --- |
| 90 | 3.6 | **Delivering** |  | 4d | 2017-12-22 08:00 | 2017-12-30 17:00 |  |  |  |  |  | 23h |
| 91 | 3.6.1 | User Manual |  | 8h | 2017-12-22 09:00 | 2017-12-22 18:00 |  | 2d | 1.5d |  | meetviolet; tang9812 | 12h |
| 92 | 3.6.2 | Development Guide |  | 6.5h | 2017-12-22 09:00 | 2017-12-23 14:30 |  | 1.44d | 0.94d |  | meetviolet; tang9812 | 6h |
| 93 | 3.6.3 | Packaging |  | 5h | 2017-12-23 17:00 | 2017-12-29 14:00 | 37 | 0.5d | 0d |  | Jack-Q | 5h |
| 94 | 3.7 | Project Execution Milestone | milestone | 0h | 2017-12-29 14:00 | 2017-12-29 14:00 | 91, 92, 93, 89 | 0.5d | 0d |  |  |  |
| 95 | 4 | **Monitoring** |  | 10.38d | 2017-11-25 09:00 | 2017-12-30 12:00 |  |  |  |  |  | 18h |
| 96 | 4.1 | Weekly Progress Report - 01 | manual | 3h | 2017-11-25 09:00 | 2017-11-25 12:00 |  |  |  | start no earlier than 2017-11-25 08:00 | meetviolet | 3h |
| 97 | 4.2 | Weekly Progress Report - 02 | manual | 3h | 2017-12-02 09:00 | 2017-12-02 12:00 |  |  |  | start no earlier than 2017-12-02 08:00 | meetviolet | 3h |
| 98 | 4.3 | Weekly Progress Report - 03 | manual | 3h | 2017-12-09 09:00 | 2017-12-09 12:00 |  |  |  | start no earlier than 2017-12-09 08:00 | meetviolet | 3h |
| 99 | 4.4 | Weekly Progress Report - 04 | manual | 3h | 2017-12-16 09:00 | 2017-12-16 12:00 |  |  |  | start no earlier than 2017-12-16 08:00 | meetviolet | 3h |
| 100 | 4.5 | Weekly Progress Report - 05 | manual | 3h | 2017-12-23 09:00 | 2017-12-23 12:00 |  |  |  | start no earlier than 2017-12-23 08:00 | meetviolet | 3h |
| 101 | 4.6 | Weekly Progress Report - 06 | manual | 3h | 2017-12-30 09:00 | 2017-12-30 12:00 |  |  |  | start no earlier than 2017-12-30 08:00 | meetviolet | 3h |
| 102 | 5 | **Closing** |  | 0.88d | 2017-12-29 14:00 | 2017-12-30 12:00 | 94 | 0.5d |  |  |  | 17h |
| 103 | 5.1 | Project Summary |  | 5h | 2017-12-29 14:00 | 2017-12-30 10:00 |  | 0.5d | 0d |  | meetviolet | 5h |
| 104 | 5.2 | Project Lesson-learned Report |  | 2h | 2017-12-30 10:00 | 2017-12-30 12:00 | 103 | 0.5d |  |  | Jack-Q; meetviolet; QianVivian; sherjy; tang9812; TinkerAC | 12h |
